# STO

Schedule from a web Gantt chart, 2024-07-01 to 2024-09-06.
Saturdays and Sundays are off

## Schedule

| ID | WBS | Task | Type | Duration | Start | Finish | Predecessors | Complete | Status |
| --- | --- | --- | --- | --- | --- | --- | --- | --- | --- |
| 2 | 1 | **R1.41** |  | 20d | 2024-07-03 | 2024-07-30 |  | 74% |  |
| 3 | 1.1 | R1.41 DEV |  | 8d | 2024-07-03 | 2024-07-12 |  | 100% | done |
| 4 | 1.2 | R1.41 SIT |  | 6d | 2024-07-15 | 2024-07-22 | 3 | 100% |  |
| 5 | 1.3 | R1.41 UAT |  | 4d | 2024-07-23 | 2024-07-26 | 4 |  | waiting |
| 6 | 1.4 | R1.41 Release | fixed end | 1d | 2024-07-30 | 2024-07-30 |  |  | waiting |
| 7 | 2 | **R1.41.1** |  | 29d | 2024-07-03 | 2024-08-12 |  |  |  |
| 8 | 2.1 | R1.41.1 DEV |  | 21d | 2024-07-03 | 2024-07-31 |  |  |  |
| 9 | 2.2 | R1.41.1 SIT |  | 2d | 2024-08-01 | 2024-08-02 | 8 |  | waiting |
| 10 | 2.3 | R1.41.1 UAT |  | 3d | 2024-08-05 | 2024-08-07 | 9 |  | waiting |
| 11 | 2.4 | R1.41.1 Release | fixed end | 1d | 2024-08-12 | 2024-08-12 |  |  | waiting |
| 12 | 3 | **AUTO EARN OPTIMIZATION PLAN** |  | 28d | 2024-07-24 | 2024-08-30 |  | 5% |  |
| 13 | 3.1 | **Auto earn optimizations** |  | 25d | 2024-07-24 | 2024-08-27 |  | 35% |  |
| 14 | 3.1.1 | FP invoice API update (WCHAT-14420) |  | 6d | 2024-07-24 | 2024-07-31 |  | 100% | done |
| 15 | 3.1.2 | Points Posting Failure Handling (WCHAT-15359) |  | 6d | 2024-07-24 | 2024-07-31 |  |  |  |
| 16 | 3.1.3 | SIT for 14420&15359 |  | 2d | 2024-08-01 | 2024-08-02 | 15 |  | waiting |
| 17 | 3.1.4 | UAT for 14420&15359 |  | 2d | 2024-08-08 | 2024-08-09 |  |  | waiting |
| 18 | 3.1.5 | Release for 14420&15359 | fixed end | 1d | 2024-08-27 | 2024-08-27 |  |  | waiting |
| 19 | 3.2 | **FP certification** |  | 23d | 2024-07-24 | 2024-08-23 |  |  |  |
| 20 | 3.2.1 | Execute FP test case |  | 2d | 2024-08-08 | 2024-08-09 |  |  |  |
| 21 | 3.2.2 | Submit FP test case |  | 1d | 2024-08-12 | 2024-08-12 | 20 |  | waiting |
| 22 | 3.2.3 | Review test case & back and forth |  | 9d | 2024-08-13 | 2024-08-23 | 21 |  | waiting |
| 23 | 3.2.4 | Prepare documents |  | 8d | 2024-07-24 | 2024-08-02 |  |  |  |
| 24 | 3.2.5 | Submit and review documents |  | 10d | 2024-08-05 | 2024-08-16 | 23 |  | waiting |
| 25 | 3.3 | **E2E** |  | 3d | 2024-08-28 | 2024-08-30 |  |  | waiting |
| 26 | 3.3.1 | Verification on Simphony hotel |  | 3d | 2024-08-28 | 2024-08-30 |  |  | waiting |
| 27 | 3.3.2 | Verification on Infrasys hotel |  | 3d | 2024-08-28 | 2024-08-30 |  |  | waiting |

Notes:
- 16: The SIT for WCHAT-14420 & WCHAT-15359 will be included in R1.41.1 SIT.
- 17: The UAT for WCHAT-14420 & WCHAT-15359 will be tested after R1.41.1 UAT is done.
- 18: The release for WCHAT-14420 & WCHAT-15359 will probably within R1.42

| ID | WBS | Task | Duration | Start | Finish | Predecessors | Complete | Status |
| --- | --- | --- | --- | --- | --- | --- | --- | --- |
| 28 | 3.4 | **Other optimizations** | 19d | 2024-08-01 | 2024-08-27 |  |  | waiting |
| 29 | 3.4.1 | Add Inline Label for Auto Earn Related Configuration (WCHAT-14795) | 19d | 2024-08-01 | 2024-08-27 |  |  | waiting |
| 30 | 3.4.2 | Request From Loyalty MKT_HP Wording Change (WCHAT-14335) | 19d | 2024-08-01 | 2024-08-27 |  |  | waiting |
| 31 | 3.4.3 | Request From Loyalty MKT_Order Confirmation Page Wording Change (WCHAT-14336) | 19d | 2024-08-01 | 2024-08-27 |  |  | waiting |
| 32 | 4 | **CASH COUPON** | 50d | 2024-07-01 | 2024-09-06 |  | 18% |  |
| 33 | 4.1 | **Delivery** | 31d | 2024-07-01 | 2024-08-12 |  | 48% |  |
| 34 | 4.1.1 | Tech design for cash coupon promotion code (balance the books) | 14d | 2024-07-01 | 2024-07-18 |  | 100% | done |
| 35 | 4.1.2 | Development for using promo code to balance the books(R1.41.1) | 9d | 2024-07-19 | 2024-07-31 |  |  |  |
| 36 | 4.1.3 | SIT for using promo code to balance the books(R1.41.1) | 2d | 2024-08-01 | 2024-08-02 | 35 |  | waiting |
| 37 | 4.1.4 | UAT for using promo code to balance the books(R1.41.1) | 3d | 2024-08-05 | 2024-08-07 | 36 |  | waiting |
| 38 | 4.1.5 | Release for using promo code to balance the books(R1.41.1) | 1d | 2024-08-12 | 2024-08-12 |  |  | waiting |
| 39 | 4.2 | **Dry Run & Business UAT** | 35d | 2024-07-15 | 2024-08-30 |  | 42% | waiting |
| 40 | 4.2.1 | Confirm dry run hotel (CANTI & ZHASI) | 18d | 2024-07-15 | 2024-08-07 |  | 100% | done |
| 41 | 4.2.2 | Prepare test cases for dry run | 7d | 2024-08-08 | 2024-08-16 |  |  | waiting |
| 42 | 4.2.3 | Set up dry run WeChat merchant account | 1d | 2024-08-08 | 2024-08-08 |  |  | waiting |
| 43 | 4.2.4 | Configure in Enrollment & deploy to trail | 1d | 2024-08-08 | 2024-08-08 |  |  | waiting |
| 44 | 4.2.5 | Set up dry run hotels' POS | 1d | 2024-08-08 | 2024-08-08 |  |  | waiting |
| 45 | 4.2.6 | Execute dry run in hotel & outlets | 4d | 2024-08-13 | 2024-08-16 | 38 |  | waiting |
| 46 | 4.2.7 | Execute business UAT | 10d | 2024-08-19 | 2024-08-30 |  |  | waiting |
| 47 | 4.3 | **POC Phase 2** | 35d | 2024-07-22 | 2024-09-06 |  |  | waiting |
| 48 | 4.3.1 | Confirm campaign coupon details | 20d | 2024-07-22 | 2024-08-16 |  |  | waiting |
| 49 | 4.3.2 | Confirm POC hotels and outlets | 20d | 2024-07-22 | 2024-08-16 |  |  | waiting |
| 50 | 4.3.3 | Set up and confirm F&B merchant account | 20d | 2024-07-22 | 2024-08-16 |  |  | waiting |
| 51 | 4.3.4 | Campaign configuration | 15d | 2024-08-19 | 2024-09-06 |  |  | waiting |
| 52 | 4.3.5 | Confirm cash coupon rollout guidance | 10d | 2024-08-05 | 2024-08-16 |  |  | waiting |
| 53 | 4.3.6 | Confirm operation guidance | 10d | 2024-08-05 | 2024-08-16 |  |  | waiting |
| 54 | 4.3.7 | Confirm finance guidance | 10d | 2024-08-05 | 2024-08-16 |  |  | waiting |

Notes:
- 28: Planned in Sprint 44
